# WebSonic Gantt Project

Schedule from GanttProject, 2026-04-01 to 2026-09-30.
WebSonic
Holidays every year on 01-01, 05-01, 05-08, 07-14, 08-15, 11-01, 11-11, 12-25

## Calendars

- Project calendar: Mon-Fri working; Sat-Sun off. Exceptions (off unless hours are given): 2026-04-06 (Lundi de Pâques), 2026-05-14 (Ascension), 2026-05-25 (Lundi de Pentecôte).

## Resources

| Resource | Group |
| --- | --- |
| Louis Z | Architecte Logiciel & Chef de Projet |
| Jeanne | CEO (Directrice Générale) |
| Cathy | CTO (Directrice Technique) |
| Louis | COO (Directeur des Opérations) |
| Agnès | Responsable de l'équipe principale de développement |
| Tim | Responsable des équipes de développement secondaires |
| Equipe de dév | Développeur |
| Clients | Clients |

## Schedule

| ID | WBS | Task | Type | Duration | Start | Finish | Resources |
| --- | --- | --- | --- | --- | --- | --- | --- |
| 1 | 1 | **🟣 PHASE 1 – Cadrage & Architecture** |  | 16d | 2026-04-01 | 2026-04-23 | Louis Z |
| 2 | 1.1 | Kick-off projet |  | 3d | 2026-04-01 | 2026-04-03 | Jeanne; Louis |
| 3 | 1.2 | Analyse AS-IS détaillé |  | 6d | 2026-04-02 | 2026-04-10 | Louis Z |
| 4 | 1.3 | Définitions périmètre & KPI |  | 7d | 2026-04-07 | 2026-04-15 | Louis Z; Louis |
| 5 | 1.4 | Architecture cible TO-BE |  | 9d | 2026-04-10 | 2026-04-22 | Louis Z; Cathy |
| 6 | 1.5 | Revue architecture (Milestone) | milestone | 0d | 2026-04-24 | 2026-04-24 | Cathy |
| 7 | 2 | **🔵 PHASE 2 – Fondations Techniques** |  | 38d | 2026-05-04 | 2026-06-29 | Cathy |
| 8 | 2.1 | Référentiel Git centralisé |  | 8d | 2026-05-04 | 2026-05-15 | Equipe de dév |
| 9 | 2.2 | Modèle site Atoms |  | 9d | 2026-05-11 | 2026-05-22 | Louis Z; Equipe de dév |
| 10 | 2.3 | API REST MVP |  | 14d | 2026-05-18 | 2026-06-05 | Equipe de dév |
| 11 | 2.4 | WebSonic Agent MVP |  | 15d | 2026-05-22 | 2026-06-12 | Equipe de dév |
| 12 | 2.5 | Sécurité mTLS + PKI |  | 15d | 2026-06-08 | 2026-06-26 |  |
| 13 | 2.6 | Agent + API opérationnels | milestone | 0d | 2026-06-30 | 2026-06-30 | Cathy |
| 14 | 3 | **🟢 PHASE 3 – Pilotes & Validation** |  | 42d | 2026-07-01 | 2026-08-28 | Louis |
| 15 | 3.1 | Migration templates vers référentiel |  | 8d | 2026-07-01 | 2026-07-10 | Equipe de dév |
| 16 | 3.2 | Sélection & Onboarding 3 clients pilotes |  | 9d | 2026-07-06 | 2026-07-17 | Louis; Clients |
| 17 | 3.3 | Déploiement Agent chez pilotes |  | 9d | 2026-07-13 | 2026-07-24 | Equipe de dév |
| 18 | 3.4 | Validation cycle < 36h |  | 10d | 2026-07-20 | 2026-07-31 | Louis Z |
| 19 | 3.5 | Monitoring & Dashboard v1 |  | 10d | 2026-08-03 | 2026-08-14 | Equipe de dév |
| 20 | 3.6 | Tests BDD & sécurité |  | 10d | 2026-08-10 | 2026-08-21 | Cathy; Equipe de dév |
| 21 | 3.7 | Validation Pilote | milestone | 0d | 2026-08-28 | 2026-08-28 | Cathy; Louis |
| 22 | 4 | **🟠 PHASE 4 – Généralisation & Stabilisation** |  | 22d | 2026-09-01 | 2026-09-30 |  |
| 23 | 4.1 | Rollback automatique validé |  | 8d | 2026-09-01 | 2026-09-10 | Equipe de dév |
| 24 | 4.2 | Déploiement +10 clients |  | 11d | 2026-09-01 | 2026-09-15 | Equipe de dév |
| 25 | 4.3 | Mesure KPI |  | 7d | 2026-09-10 | 2026-09-18 | Louis Z |
| 26 | 4.4 | Documentation globale multi-timezone |  | 9d | 2026-09-15 | 2026-09-25 | Louis Z |
| 27 | 4.5 | Audit de sécurité externe |  | 9d | 2026-09-15 | 2026-09-25 | Cathy |
| 28 | 4.6 | Projet validé | milestone | 0d | 2026-09-30 | 2026-09-30 | Jeanne |

Notes:
- 2: Livrable : Validation objectifs stratégiques
- 3: Synthèse processus actuel + irritants
- 4: Périmètre validé + KPI mesurables
- 5: Architecture Validée
- 6: Validation CTO
- 7: Responsable : Cathy / Exécutiuon : Team Dev
- 8: Livrable : Repo structuré + versionné
- 9: Catalogue modules v1
- 10: Endpoints auth/deploy/version
- 11: Agent containerisé fonctionnel
- 12: Communications sécurisée opérationnelle
- 21: Go / No-go généralisation
- 28: Validation stratégique
